# BBQRMS Project Plan 2011

How a schedule from MS Project changed from version to version. A marks actual dates.

## Version 1 (saved 2011-01-11)

Note of the change: Adding the correct project file.

| ID | WBS | Task | Duration | Start | Finish | Predecessors | Total float | Constraint |
| --- | --- | --- | --- | --- | --- | --- | --- | --- |
| 1 | 1 | **Iteration 1** | 13d | 2011-01-03 | 2011-01-19 |  | 62d |  |
| 2 |  | Revise Project Plan | 6d | 2011-01-03 | 2011-01-10 |  | 67d | start no earlier than 2011-01-03 |
| 3 |  | Revise SSRS | 2d | 2011-01-10 | 2011-01-12 | 2 | 67d |  |
| 4 |  | Revised SSRS Due | 0d | 2011-01-19 | 2011-01-19 | 2, 3 | 63d | start no earlier than 2011-01-19 |
| 5 |  | DB Create Script | 5d | 2011-01-13 | 2011-01-19 |  | 62d | start no earlier than 2011-01-13 |
| 6 |  | BBQRMS-42 Shell - Main application navigation | 5d | 2011-01-13 | 2011-01-19 |  | 62d | start no earlier than 2011-01-13 |
| 7 |  | BBQRMS-44 Shell - Setup database server and communication | 5d | 2011-01-13 | 2011-01-19 | 5SS | 62d |  |
| 8 |  | BBQRMS-18 Inventory Management - Receive an inventory order | 5d | 2011-01-13 | 2011-01-19 |  | 62d | start no earlier than 2011-01-13 |
| 9 |  | BBQRMS-45 Order Entry - Design User Interface for Placing Customer Orders | 5d | 2011-01-13 | 2011-01-19 |  | 58d | start no earlier than 2011-01-13 |
| 10 |  | Graded Checkpoint 1 | 0d | 2011-01-19 | 2011-01-19 |  | 53d | start no earlier than 2011-01-19 |
| 11 | 2 | **Iteration 2** | 8d | 2011-01-19 | 2011-01-31 | 10 | 53d |  |
| 12 |  | BBQRMS-22 Security - Users can log in | 1d | 2011-01-19 | 2011-01-19 |  | 62d |  |
| 13 |  | BBQRMS-23 Security - Users can log out | 1d | 2011-01-19 | 2011-01-19 |  | 62d |  |
| 14 |  | BBQRMS-43 Reports - Integrated reporting tool | 6d | 2011-01-19 | 2011-01-26 |  | 57d |  |
| 15 |  | BBQRMS-33 Order Entry - Place and save customer order without taking payment | 4d | 2011-01-20 | 2011-01-25 | 9 | 58d |  |
| 16 |  | BBQRMS-37 Order Entry - Recall and modify saved customer order | 4d | 2011-01-20 | 2011-01-25 | 9 | 58d |  |
| 17 |  | BBQRMS-17 Inventory Management - Add Supplier | 8d | 2011-01-19 | 2011-01-28 |  | 55d |  |
| 18 |  | BBQRMS-31 Menu Management - Create Menu Item | 8d | 2011-01-19 | 2011-01-28 |  | 55d |  |
| 19 |  | Graded Progress Check 2 | 0d | 2011-01-31 | 2011-01-31 |  | 45d | start no earlier than 2011-01-31 |
| 20 | 3 | **Iteration 3** | 10d | 2011-01-31 | 2011-02-11 | 19 | 45d |  |
| 21 |  | BBQRMS-36 Cashiering - Accept payment for saved customer order | 5d | 2011-01-31 | 2011-02-04 |  | 47d |  |
| 22 |  | BBQRMS-35 Order Entry - Take a customer order and accept payment | 5d | 2011-01-31 | 2011-02-04 |  | 50d |  |
| 23 |  | BBQRMS-19 Inventory Management - Reconcile Inventory | 10d | 2011-01-31 | 2011-02-11 |  | 45d |  |
| 24 |  | BBQRMS-25 Security - Users can change their PIN | 2d | 2011-01-31 | 2011-02-01 |  | 53d |  |
| 25 |  | BBQRMS-30 Security - Users can clock in and clock out | 4d | 2011-01-31 | 2011-02-03 |  | 51d |  |
| 26 |  | BBQRMS-24 Security - Program features are limited by assigned user roles | 3d | 2011-01-31 | 2011-02-02 |  | 52d |  |
| 27 |  | BBQRMS-39 admin - Add/Modify Employees | 5d | 2011-01-31 | 2011-02-04 |  | 50d |  |
| 28 |  | BBQRMS-40 admin - Add/Modify Roles and Privs | 5d | 2011-01-31 | 2011-02-04 |  | 50d |  |
| 29 | 4 | **Iteration 4** | 15d? | 2011-02-07 | 2011-02-28 | 21 | 35d |  |
| 30 |  | Test Plan | 1d? | 2011-02-07 | 2011-02-07 |  | 49d |  |
| 31 |  | Testing Results | 0d | 2011-02-23 | 2011-02-23 |  | 38d | start no earlier than 2011-02-23 |
| 32 |  | Graded Checkpoint 3 | 0d | 2011-02-28 | 2011-02-28 |  | 32d | start no earlier than 2011-02-28 |
| 33 |  | Iteration 5 | 1d? | 2011-02-28 | 2011-02-28 | 32 | 32d |  |
| 34 |  | Iteration 6 | 1d? | 2011-03-01 | 2011-03-01 | 33 | 32d |  |
| 35 | 7 | **Iteration 7** | 8d | 2011-03-23 | 2011-04-04 | 34 | 10d |  |
| 36 |  | Beta Test Results | 0d | 2011-03-23 | 2011-03-23 |  | 18d | start no earlier than 2011-03-23 |
| 37 |  | Graded Checkpoint 4 | 0d | 2011-04-04 | 2011-04-04 |  | 9d | start no earlier than 2011-04-04 |
| 38 | 8 | **Iteration 8** | 10d? | 2011-04-04 | 2011-04-18 | 37 | 0d |  |
| 39 |  | Final Delivery to Instructor | 0d | 2011-04-11 | 2011-04-11 |  | 5d | start no earlier than 2011-04-11 |
| 40 |  | Project Go Live | 0d | 2011-04-18 | 2011-04-18 |  | 0d | start no earlier than 2011-04-18 |
| 41 |  | BBQRMS-16 Inventory Management - Touch-screen | 1d? | 2011-04-04 | 2011-04-04 |  | 9d |  |
| 42 |  | BBQRMS-28 Reports - Daily Sales Report | 1d? | 2011-04-04 | 2011-04-04 |  | 9d |  |
| 43 |  | BBQRMS-26 Reports - Income statement | 1d? | 2011-04-04 | 2011-04-04 |  | 9d |  |
| 44 |  | BBQRMS-29 Reports - Inventory turns | 1d? | 2011-04-04 | 2011-04-04 |  | 9d |  |
| 45 |  | BBQRMS-27 Reports - Weekly prime cost report | 1d? | 2011-04-04 | 2011-04-04 |  | 9d |  |
| 46 |  | BBQRMS-34 Cashiering - Split a Check | 1d? | 2011-04-04 | 2011-04-04 |  | 9d |  |
| 47 |  | BBQRMS-38 Cashiering - Take multiple methods of payment for a customer order | 1d? | 2011-04-04 | 2011-04-04 |  | 9d |  |
| 48 |  | BBQRMS-32 Cook Screen - Complete a Customer Order | 1d? | 2011-04-04 | 2011-04-04 |  | 9d |  |
| 49 |  | BBQRMS-2 Daily Shopping List | 1d? | 2011-04-04 | 2011-04-04 |  | 9d |  |
| 50 |  | BBQRMS-5 Update UI for user management to be touch friendly | 1d? | 2011-04-04 | 2011-04-04 |  | 9d |  |

## Version 2 (saved 2011-01-13)

Note of the change: Leveled the resources.

Last finish stays 2011-04-18.

Added:

| ID | Task | Duration | Start | Finish | Predecessors | Constraint | Resources |
| --- | --- | --- | --- | --- | --- | --- | --- |
| 20 | BBQRMS-31 Menu Management - Create/Edit/Delete Menu | 8d | 2011-01-20 | 2011-01-31 |  |  | Bob; Jerod [50%] |
| 30 | BBQRMS-31 Menu Management - Create/Edit/Delete Menu Item | 10d | 2011-02-01 | 2011-02-14 |  |  | Bob; Jerod [50%] |
| 33 | Cashiering - Print Receipt | 5d | 2011-02-15 | 2011-02-21 |  |  | Mike |
| 37 | Dashboard - Display managers dashboard | 1d | 2011-02-28 | 2011-02-28 |  |  | Jerod |
| 38 | Dashboard - Display whose on the clock | 1d | 2011-02-28 | 2011-02-28 |  |  | Bob |
| 40 | System testing | 8d | 2011-02-16 | 2011-02-25 | 39 | as late as possible | Bob; Jerod |
| 47 | Cashiering - Open Cash drawer | 5d | 2011-03-01 | 2011-03-07 |  |  | Mike |
| 49 | Cashiering - Process Credit Card | 5d | 2011-03-08 | 2011-03-14 |  |  | Scott |
| 50 | Dashboard - Display estimated daily profit. | 3d | 2011-03-07 | 2011-03-09 |  |  | Jerod |
| 51 | Dashboard - Display estimated cost of goods | 3d | 2011-03-10 | 2011-03-14 |  |  | Jerod |
| 53 | System testing | 10d | 2011-03-01 | 2011-03-14 |  |  | Jessie; Bob |
| 55 | Beta testing | 7d | 2011-03-15 | 2011-03-23 |  | as late as possible | Jerod; Scott; Mike; Jessie; Bob |
| 57 | Bug Fixing | 8d | 2011-03-24 | 2011-04-04 |  |  | Jerod; Scott; Mike; Jessie |
| 58 | System Testing | 8d | 2011-03-24 | 2011-04-04 |  |  | Bob |
| 61 | Burn in | 10d | 2011-04-05 | 2011-04-18 |  |  | Jerod; Scott; Mike; Jessie; Bob |
| 65 | Dashboard - Display Current turnaround time | 1d? | 2011-04-05 | 2011-04-05 |  |  |  |
| 66 | Dashboard - Display hourly income graph | 1d? | 2011-04-05 | 2011-04-05 |  |  |  |
| 67 | Dashboard - Display menu items sold bar graph | 1d? | 2011-04-05 | 2011-04-05 |  |  |  |

Removed: 18 BBQRMS-31 Menu Management - Create Menu Item; 35 Iteration 7

Changed:

| ID | Task | Start | Finish | Duration | Total float | Predecessors | Other |
| --- | --- | --- | --- | --- | --- | --- | --- |
| 1 | **Iteration 1 (1/3-1/19)** |  |  |  | 62d → 5d |  | was named Iteration 1 |
| 2 | Revise Project Plan |  |  |  | 67d → 5d |  | constraint start no earlier than 2011-01-03 → none |
| 3 | Revise SSRS | 2011-01-10 → 2011-01-11 (+1d) |  |  | 67d → 5d |  |  |
| 4 | Revised SSRS Due |  |  |  | 63d → 0d |  | constraint start no earlier than 2011-01-19 → must finish on 2011-01-19 |
| 5 | Build Initial Database structure |  |  |  | 62d → 63d |  | was named DB Create Script; constraint start no earlier than 2011-01-13 → none |
| 6 | BBQRMS-42 Shell - Main application navigation |  | 2011-01-19 → 2011-01-14 (-5d) | 5d → 2d | 62d → 65d |  | constraint start no earlier than 2011-01-13 → none; resources Mike [50%] → Mike |
| 7 | BBQRMS-44 Shell - Setup database server and communication | 2011-01-13 → 2011-01-17 (+4d) | 2011-01-19 → 2011-01-17 (-2d) | 5d → 1d | 62d → 64d | 5SS → none | resources Mike [50%] → Mike |
| 8 | BBQRMS-18 Inventory Management - Receive an inventory order |  |  |  | 62d → 63d |  | constraint start no earlier than 2011-01-13 → none |
| 9 | BBQRMS-45 Order Entry - Design User Interface for Placing Customer Orders |  |  |  | 58d → 55d |  | constraint start no earlier than 2011-01-13 → none |
| 10 | BBQRMS-22 Security - Users can log in | 2011-01-19 → 2011-01-18 (-1d) | 2011-01-19 → 2011-01-18 (-1d) | 1d → 0.5d | 62d → 64d | none → 6, 7 |  |
| 11 | BBQRMS-23 Security - Users can log out | 2011-01-19 → 2011-01-18 (-1d) | 2011-01-19 → 2011-01-18 (-1d) | 1d → 0.5d | 62d → 64d | none → 10 |  |
| 12 | Graded Checkpoint 1 |  |  |  | 53d → 0d |  | constraint start no earlier than 2011-01-19 → must finish on 2011-01-19 |
| 13 | **Iteration 2 (1/20-1/31)** | 2011-01-19 → 2011-01-20 (+1d) |  |  | 53d → 8d | 12 → none | was named Iteration 2; constraint none → start no earlier than 2011-01-20 |
| 14 | BBQRMS-24 Security - Program features are limited by assigned user roles | 2011-01-31 → 2011-01-28 (-3d) | 2011-02-02 → 2011-01-31 (-2d) | 3d → 2d | 52d → 55d |  |  |
| 15 | BBQRMS-43 Reports - Integrated reporting tool | 2011-01-19 → 2011-01-20 (+1d) | 2011-01-26 → 2011-01-27 (+1d) |  |  |  |  |
| 17 | BBQRMS-37 Order Entry - Recall and modify saved customer order | 2011-01-20 → 2011-01-26 (+6d) | 2011-01-25 → 2011-01-31 (+6d) |  | 58d → 55d |  |  |
| 18 | BBQRMS-17 Inventory Management - Add Supplier | 2011-01-19 → 2011-01-20 (+1d) | 2011-01-28 → 2011-01-31 (+3d) |  |  |  |  |
| 19 | BBQRMS-39 admin - Add/Modify Employees | 2011-01-31 → 2011-01-20 (-11d) | 2011-02-04 → 2011-01-31 (-4d) | 5d → 8d | 50d → 55d |  | resources Jerod → Jerod [50%] |
| 21 | Graded Progress Check 2 |  |  |  | 45d → 0d |  | constraint start no earlier than 2011-01-31 → must finish on 2011-01-31 |
| 22 | **Iteration 3 (2/1-2/14)** | 2011-01-31 → 2011-02-01 (+1d) | 2011-02-11 → 2011-02-14 (+3d) |  |  | 21 → none | was named Iteration 3; constraint none → start no earlier than 2011-02-01 |
| 23 | BBQRMS-36 Cashiering - Accept payment for saved customer order | 2011-01-31 → 2011-02-01 (+1d) | 2011-02-04 → 2011-02-07 (+3d) |  | 47d → 50d |  |  |
| 24 | BBQRMS-35 Order Entry - Take a customer order and accept payment | 2011-01-31 → 2011-02-08 (+8d) | 2011-02-04 → 2011-02-14 (+10d) |  | 50d → 45d |  |  |
| 25 | BBQRMS-19 Inventory Management - Reconcile Inventory | 2011-01-31 → 2011-02-01 (+1d) | 2011-02-11 → 2011-02-14 (+3d) |  |  |  |  |
| 26 | BBQRMS-30 Security - Users can clock in and clock out | 2011-01-31 → 2011-02-01 (+1d) | 2011-02-03 → 2011-02-04 (+1d) |  |  |  |  |
| 27 | BBQRMS-25 Security - Users can change their PIN | 2011-01-31 → 2011-02-07 (+7d) | 2011-02-01 → 2011-02-08 (+7d) |  | 53d → 49d |  |  |
| 28 | BBQRMS-28 Reports - Daily Sales Report | 2011-04-04 → 2011-02-09 (-54d) | 2011-04-04 → 2011-02-10 (-53d) | 1d? → 2d | 9d → 47d |  | resources none → Mike |
| 29 | BBQRMS-40 admin - Add/Modify Roles and Privs | 2011-01-31 → 2011-02-01 (+1d) | 2011-02-04 → 2011-02-07 (+3d) |  |  |  | resources Jerod → Jerod [50%] |
| 31 | **Iteration 4 (2/15-2/28)** | 2011-02-07 → 2011-02-15 (+8d) |  | 15d? → 10d? | 35d → -1d | 23 → none | was named Iteration 4; constraint none → start no earlier than 2011-02-15 |
| 32 | BBQRMS-2 Reports - Daily Shopping List | 2011-04-04 → 2011-02-22 (-41d) | 2011-04-04 → 2011-02-24 (-39d) | 1d? → 3d | 9d → 37d |  | was named BBQRMS-2 Daily Shopping List; resources none → Mike |
| 34 | BBQRMS-32 Cook Screen - Complete a Customer Order | 2011-04-04 → 2011-02-15 (-48d) | 2011-04-04 → 2011-02-21 (-42d) | 1d? → 5d | 9d → 40d |  | resources none → Scott |
| 35 | BBQRMS-34 Cashiering - Split a Check | 2011-04-04 → 2011-02-22 (-41d) | 2011-04-04 → 2011-02-28 (-35d) | 1d? → 5d | 9d → 35d |  | resources none → Scott |
| 36 | BBQRMS-16 Inventory Management - Touch-screen | 2011-04-04 → 2011-02-15 (-48d) | 2011-04-04 → 2011-02-15 (-48d) |  | 9d → 44d |  | resources none → Jessie |
| 39 | Test Plan | 2011-02-07 → 2011-02-15 (+8d) | 2011-02-07 → 2011-02-15 (+8d) | 1d? → 1d | 49d → 0d |  | constraint none → as late as possible; resources none → Bob; Jerod |
| 41 | Testing Results |  |  |  | 38d → -2d | none → 40 | constraint start no earlier than 2011-02-23 → must finish on 2011-02-23 |
| 42 | Graded Checkpoint 3 |  |  |  | 32d → 0d |  | constraint start no earlier than 2011-02-28 → must finish on 2011-02-28 |
| 43 | **Iteration 5 (3/1-3/14)** | 2011-02-28 → 2011-03-01 (+1d) | 2011-02-28 → 2011-03-14 (+14d) | 1d? → 10d | 32d → 25d | 42 → none | was named Iteration 5; constraint none → start no earlier than 2011-03-01 |
| 44 | BBQRMS-26 Reports - Income statement | 2011-04-04 → 2011-03-08 (-27d) | 2011-04-04 → 2011-03-08 (-27d) | 1d? → 1d | 9d → 29d |  | resources none → Mike |
| 45 | BBQRMS-29 Reports - Inventory turns | 2011-04-04 → 2011-03-09 (-26d) | 2011-04-04 → 2011-03-09 (-26d) | 1d? → 1d | 9d → 28d |  | resources none → Mike |
| 46 | BBQRMS-27 Reports - Weekly prime cost report | 2011-04-04 → 2011-03-10 (-25d) | 2011-04-04 → 2011-03-10 (-25d) | 1d? → 1d | 9d → 27d |  | resources none → Mike |
| 48 | BBQRMS-38 Cashiering - Take multiple methods of payment for a customer order | 2011-04-04 → 2011-03-01 (-34d) | 2011-04-04 → 2011-03-07 (-28d) | 1d? → 5d | 9d → 30d |  | resources none → Scott |
| 52 | BBQRMS-5 Update UI for user management to be touch friendly | 2011-04-04 → 2011-03-01 (-34d) | 2011-04-04 → 2011-03-04 (-31d) | 1d? → 4d | 9d → 31d |  | resources none → Jerod |
| 54 | **Iteration 6 (3/15-4/4)** | 2011-03-01 → 2011-03-15 (+14d) | 2011-03-01 → 2011-04-04 (+34d) | 1d? → 15d | 32d → 0d | 43 → none | was named Iteration 6; constraint none → start no earlier than 2011-03-15 |
| 56 | Beta Test Results |  |  |  | 18d → 0d | none → 55 | constraint start no earlier than 2011-03-23 → must finish on 2011-03-23 |
| 59 | Graded Checkpoint 4 |  |  |  | 9d → 0d |  | constraint start no earlier than 2011-04-04 → must finish on 2011-04-04 |
| 60 | **Iteration 7 (4/5-4/18)** | 2011-04-04 → 2011-04-05 (+1d) |  |  |  | 59 → none | was named Iteration 8; constraint none → start no earlier than 2011-04-05 |
| 62 | Final Delivery to Instructor | 2011-04-11 → 2011-04-13 (+2d) | 2011-04-11 → 2011-04-13 (+2d) |  | 5d → 0d |  | constraint start no earlier than 2011-04-11 → must finish on 2011-04-13 |
| 63 | Project Go Live |  |  |  |  |  | constraint start no earlier than 2011-04-18 → must finish on 2011-04-18 |

## Version 3 (saved 2011-01-19)

Last finish stays 2011-04-18.

Changed:

| ID | Task | Finish | Duration | Total float |
| --- | --- | --- | --- | --- |
| 31 | **Iteration 4 (2/15-2/28)** |  | 10d? → 10d |  |
| 36 | BBQRMS-16 Inventory Management - Touch-screen | 2011-02-15 → 2011-02-18 (+3d) | 1d? → 4d | 44d → 41d |

## Version 4 (saved 2011-01-19)

Note of the change: Deleted the Income Statement report. We won't have the necessary data to complete it.

Last finish stays 2011-04-18.

Removed: 44 BBQRMS-26 Reports - Income statement

Changed:

| ID | Task | Other |
| --- | --- | --- |
| 46 | BBQRMS-52 Cashiering - Open Cash drawer | was named Cashiering - Open Cash drawer |

## Version 5 (saved 2011-01-22)

Note of the change: Updated the project plan and turned it in.

Last finish stays 2011-04-18. Complete tasks 0 → 5.

Added:

| ID | Task | Duration | Start | Finish | Predecessors | Resources |
| --- | --- | --- | --- | --- | --- | --- |
| 19 | BBQRMS-57 Inventory Management - Place an Inventory Order | 4d | 2011-01-26 | 2011-01-31 | 18 | Jessie |

Removed: 63 Dashboard - Display Current turnaround time; 64 Dashboard - Display hourly income graph; 65 Dashboard - Display menu items sold bar graph

Changed:

| ID | Task | Start | Finish | Duration | Complete | Total float | Predecessors | Other |
| --- | --- | --- | --- | --- | --- | --- | --- | --- |
| 1 | **Iteration 1 (1/3-1/19)** | 2011-01-03 A |  |  | 0% → 82% | 5d → 55d |  | baseline start none → 2011-01-03; baseline finish none → 2011-01-19 |
| 2 | Revise Project Plan | 2011-01-03 A | 2011-01-10 A |  | 0% → 100% | 5d → none |  | baseline start none → 2011-01-03; baseline finish none → 2011-01-10 |
| 3 | Revise SSRS | 2011-01-11 A | 2011-01-12 A |  | 0% → 100% | 5d → none |  | baseline start none → 2011-01-11; baseline finish none → 2011-01-12 |
| 4 | Revised SSRS Due |  |  |  |  |  |  | baseline start none → 2011-01-19; baseline finish none → 2011-01-19 |
| 5 | BBQRMS-47 Build Initial Database structure | 2011-01-13 A | 2011-01-19 A |  | 0% → 100% | 63d → none |  | was named Build Initial Database structure; baseline start none → 2011-01-13; baseline finish none → 2011-01-19 |
| 6 | BBQRMS-42 Shell - Main application navigation |  |  |  |  | 65d → 57.75d |  | baseline start none → 2011-01-13; baseline finish none → 2011-01-14 |
| 7 | BBQRMS-44 Shell - Setup database server and communication | 2011-01-17 A | 2011-01-17 A |  | 0% → 100% | 64d → none |  | baseline start none → 2011-01-17; baseline finish none → 2011-01-17 |
| 8 | BBQRMS-22 Security - Users can log in | 2011-01-18 A |  |  | 0% → 75% | 64d → 56.38d |  | baseline start none → 2011-01-18; baseline finish none → 2011-01-18 |
| 9 | BBQRMS-23 Security - Users can log out | 2011-01-18 A |  |  | 0% → 75% | 64d → 56d |  | baseline start none → 2011-01-18; baseline finish none → 2011-01-18 |
| 10 | BBQRMS-18 Inventory Management - Receive an inventory order | 2011-01-13 A |  |  | 0% → 50% | 63d → 52d |  | baseline start none → 2011-01-13; baseline finish none → 2011-01-19 |
| 11 | BBQRMS-45 Order Entry - Design User Interface for Placing Customer Orders | 2011-01-13 A | 2011-01-19 A |  | 0% → 100% | 55d → none |  | baseline start none → 2011-01-13; baseline finish none → 2011-01-19 |
| 12 | Graded Checkpoint 1 |  |  |  |  |  |  | baseline start none → 2011-01-19; baseline finish none → 2011-01-19 |
| 13 | **Iteration 2 (1/20-1/31)** | 2011-01-20 A |  |  | 0% → 11% | 8d → 55d |  | baseline start none → 2011-01-20; baseline finish none → 2011-01-31 |
| 14 | BBQRMS-24 Security - Program features are limited by assigned user roles |  |  |  |  |  |  | baseline start none → 2011-01-28; baseline finish none → 2011-01-31 |
| 15 | BBQRMS-43 Reports - Integrated reporting tool | 2011-01-20 A |  |  | 0% → 25% | 57d → 54d |  | baseline start none → 2011-01-20; baseline finish none → 2011-01-27 |
| 16 | BBQRMS-33 Order Entry - Place and save customer order without taking payment | 2011-01-20 A |  |  | 0% → 25% |  |  | baseline start none → 2011-01-20; baseline finish none → 2011-01-25 |
| 17 | BBQRMS-37 Order Entry - Recall and modify saved customer order |  |  |  |  |  |  | baseline start none → 2011-01-26; baseline finish none → 2011-01-31 |
| 18 | BBQRMS-17 Inventory Management - Add Supplier | 2011-01-20 A | 2011-01-31 → 2011-01-25 (-6d) | 8d → 4d | 0% → 25% |  |  | baseline start none → 2011-01-20; baseline finish none → 2011-01-25 |
| 20 | BBQRMS-39 admin - Add/Modify Employees |  | 2011-01-31 → 2011-01-24 (-7d) | 8d → 3d |  |  |  | resources Jerod [50%] → Jerod; baseline start none → 2011-01-20; baseline finish none → 2011-01-24 |
| 21 | BBQRMS-40 admin - Add/Modify Roles and Privs | 2011-02-01 → 2011-01-25 (-7d) | 2011-02-07 → 2011-01-31 (-7d) |  |  | 50d → 55d | none → 20 | resources Jerod [50%] → Jerod; baseline start none → 2011-01-25; baseline finish none → 2011-01-31 |
| 22 | Graded Progress Check 2 |  |  |  |  |  |  | baseline start none → 2011-01-31; baseline finish none → 2011-01-31 |
| 23 | **Iteration 3 (2/1-2/14)** |  |  |  |  | 45d → 44d |  | baseline start none → 2011-02-01; baseline finish none → 2011-02-14 |
| 24 | BBQRMS-36 Cashiering - Accept payment for saved customer order |  |  |  |  | 50d → 45d | none → 11 | baseline start none → 2011-02-01; baseline finish none → 2011-02-07 |
| 25 | BBQRMS-35 Order Entry - Take a customer order and accept payment |  |  |  |  |  | none → 24 | baseline start none → 2011-02-08; baseline finish none → 2011-02-14 |
| 26 | BBQRMS-19 Inventory Management - Reconcile Inventory |  |  |  |  | 45d → 44d | none → 10 | baseline start none → 2011-02-01; baseline finish none → 2011-02-14 |
| 27 | BBQRMS-30 Security - Users can clock in and clock out |  |  |  |  | 51d → 47d | none → 8, 9 | baseline start none → 2011-02-01; baseline finish none → 2011-02-04 |
| 28 | BBQRMS-25 Security - Users can change their PIN |  |  |  |  | 49d → 47d | none → 27 | baseline start none → 2011-02-07; baseline finish none → 2011-02-08 |
| 29 | BBQRMS-28 Reports - Daily Sales Report |  |  |  |  |  | none → 15, 28 | baseline start none → 2011-02-09; baseline finish none → 2011-02-10 |
| 30 | BBQRMS-56 Menu Management - Create/Edit/Delete Menu | 2011-01-20 → 2011-02-01 (+12d) | 2011-01-31 → 2011-02-04 (+4d) | 8d → 4d |  | 55d → 46d |  | was named BBQRMS-31 Menu Management - Create/Edit/Delete Menu; resources Bob; Jerod [50%] → Jerod; baseline start none → 2011-02-01; baseline finish none → 2011-02-04 |
| 31 | BBQRMS-31 Menu Management - Create/Edit/Delete Menu Item | 2011-02-01 → 2011-02-07 (+6d) | 2011-02-14 → 2011-02-11 (-3d) | 10d → 5d |  | 45d → 46d | none → 30 | resources Bob; Jerod [50%] → Jerod; baseline start none → 2011-02-07; baseline finish none → 2011-02-11 |
| 32 | **Iteration 4 (2/15-2/28)** |  | 2011-02-28 → 2011-03-01 (+1d) | 10d → 11d? |  | -1d → 1d |  | baseline start none → 2011-02-15; baseline finish none → 2011-03-01 |
| 33 | BBQRMS-48 Cashiering - Print Receipt |  |  |  |  | 40d → 37d |  | was named Cashiering - Print Receipt; baseline start none → 2011-02-15; baseline finish none → 2011-02-21 |
| 34 | BBQRMS-2 Reports - Daily Shopping List |  |  |  |  |  | none → 33, 15 | baseline start none → 2011-02-22; baseline finish none → 2011-02-24 |
| 35 | BBQRMS-32 Cook Screen - Complete a Customer Order |  |  |  |  | 40d → 35d |  | baseline start none → 2011-02-15; baseline finish none → 2011-02-21 |
| 36 | BBQRMS-34 Cashiering - Split a Check |  |  |  |  |  | none → 24, 35 | baseline start none → 2011-02-22; baseline finish none → 2011-02-28 |
| 37 | BBQRMS-16 Inventory Management - Touch-screen |  | 2011-02-18 → 2011-02-15 (-3d) | 4d → 1d? |  | 41d → 44d | none → 26 | baseline start none → 2011-02-15; baseline finish none → 2011-02-15 |
| 38 | BBQRMS-50 Dashboard - Display managers dashboard |  |  |  |  | 35d → 34d |  | was named Dashboard - Display managers dashboard; baseline start none → 2011-02-28; baseline finish none → 2011-02-28 |
| 39 | BBQRMS-51 Dashboard - Display whose on the clock | 2011-02-28 → 2011-03-01 (+1d) | 2011-02-28 → 2011-03-01 (+1d) |  |  | 35d → 34d | none → 38 | was named Dashboard - Display whose on the clock; resources Bob → Jerod; baseline start none → 2011-03-01; baseline finish none → 2011-03-01 |
| 40 | Test Plan | 2011-02-15 → 2011-02-16 (+1d) | 2011-02-15 → 2011-02-16 (+1d) |  |  |  |  | resources Bob; Jerod → Jerod; Jessie; baseline start none → 2011-02-16; baseline finish none → 2011-02-16 |
| 41 | System testing | 2011-02-16 → 2011-02-17 (+1d) | 2011-02-25 → 2011-02-23 (-2d) | 8d → 5d |  | -2d → 0d |  | resources Bob; Jerod → Jerod; Jessie; baseline start none → 2011-02-17; baseline finish none → 2011-02-23 |
| 42 | Testing Results |  |  |  |  | -2d → 0d |  | baseline start none → 2011-02-23; baseline finish none → 2011-02-23 |
| 43 | Graded Checkpoint 3 |  |  |  |  |  |  | baseline start none → 2011-02-28; baseline finish none → 2011-02-28 |
| 44 | **Iteration 5 (3/1-3/14)** |  |  |  |  |  |  | baseline start none → 2011-03-01; baseline finish none → 2011-03-14 |
| 45 | BBQRMS-52 Cashiering - Open Cash drawer |  |  |  |  | 30d → 27d |  | baseline start none → 2011-03-01; baseline finish none → 2011-03-07 |
| 46 | BBQRMS-29 Reports - Inventory turns | 2011-03-09 → 2011-03-08 (-1d) |  | 1d → 2d |  | 28d → 27d | none → 15, 45 | baseline start none → 2011-03-09; baseline finish none → 2011-03-09 |
| 47 | BBQRMS-27 Reports - Weekly prime cost report |  |  |  |  |  | none → 15, 46 | baseline start none → 2011-03-10; baseline finish none → 2011-03-10 |
| 48 | BBQRMS-38 Cashiering - Take multiple methods of payment for a customer order |  |  |  |  | 30d → 25d |  | baseline start none → 2011-03-01; baseline finish none → 2011-03-07 |
| 49 | BBQRMS-53 Cashiering - Process Credit Card |  |  |  |  |  | none → 48 | was named Cashiering - Process Credit Card; baseline start none → 2011-03-08; baseline finish none → 2011-03-14 |
| 50 | BBQRMS-5 Update UI for user management to be touch friendly |  |  |  |  |  |  | baseline start none → 2011-03-01; baseline finish none → 2011-03-04 |
| 51 | BBQRMS-54 Dashboard - Display estimated daily profit. |  |  |  |  |  |  | was named Dashboard - Display estimated daily profit.; baseline start none → 2011-03-07; baseline finish none → 2011-03-09 |
| 52 | BBQRMS-55 Dashboard - Display estimated cost of goods |  |  |  |  |  |  | was named Dashboard - Display estimated cost of goods; baseline start none → 2011-03-10; baseline finish none → 2011-03-14 |
| 53 | System testing |  |  |  |  |  |  | resources Jessie; Bob → Jessie; baseline start none → 2011-03-01; baseline finish none → 2011-03-14 |
| 54 | **Iteration 6 (3/15-4/4)** |  |  |  |  |  |  | baseline start none → 2011-03-15; baseline finish none → 2011-04-04 |
| 55 | Beta testing |  |  |  |  |  |  | resources Jerod; Scott; Mike; Jessie; Bob → Jerod; Scott; Mike; Jessie; baseline start none → 2011-03-15; baseline finish none → 2011-03-23 |
| 56 | Beta Test Results |  |  |  |  |  |  | baseline start none → 2011-03-23; baseline finish none → 2011-03-23 |
| 57 | Bug Fixing |  | 2011-04-04 → 2011-04-01 (-3d) | 8d → 7d |  | 10d → 11d |  | resources Jerod; Scott; Mike; Jessie → Scott; Mike; baseline start none → 2011-03-24; baseline finish none → 2011-04-01 |
| 58 | System Testing |  | 2011-04-04 → 2011-04-01 (-3d) | 8d → 7d |  | 10d → 11d |  | resources Bob → Jerod; Jessie; baseline start none → 2011-03-24; baseline finish none → 2011-04-01 |
| 59 | Graded Checkpoint 4 |  |  |  |  |  |  | baseline start none → 2011-04-04; baseline finish none → 2011-04-04 |
| 60 | **Iteration 7 (4/5-4/18)** |  |  | 10d? → 10d |  |  |  | baseline start none → 2011-04-05; baseline finish none → 2011-04-18 |
| 61 | Burn in |  |  |  |  |  |  | resources Jerod; Scott; Mike; Jessie; Bob → Jerod; Scott; Mike; Jessie; baseline start none → 2011-04-05; baseline finish none → 2011-04-18 |
| 62 | Final Delivery to Instructor |  |  |  |  |  |  | baseline start none → 2011-04-13; baseline finish none → 2011-04-13 |
| 63 | Project Go Live |  |  |  |  |  |  | baseline start none → 2011-04-18; baseline finish none → 2011-04-18 |

## Version 6 (saved 2011-02-08)

Note of the change: Started on the Admin screen. I also started implementing the use of static resources. Sorry if this bugs you, but its for the best.

Last finish stays 2011-04-18. Complete tasks 5 → 11.

Changed:

| ID | Task | Start | Finish | Complete | Total float |
| --- | --- | --- | --- | --- | --- |
| 1 | **Iteration 1 (1/3-1/19)** |  |  | 82% → 91% | 55d → 52d |
| 6 | BBQRMS-42 Shell - Main application navigation | 2011-01-13 A | 2011-01-14 A | 0% → 100% | 57.75d → none |
| 8 | BBQRMS-22 Security - Users can log in |  | 2011-01-18 A | 75% → 100% | 56.38d → none |
| 9 | BBQRMS-23 Security - Users can log out |  | 2011-01-18 A | 75% → 100% | 56d → none |
| 13 | **Iteration 2 (1/20-1/31)** |  |  | 11% → 42% |  |
| 14 | BBQRMS-24 Security - Program features are limited by assigned user roles | 2011-01-28 A | 2011-01-31 A | 0% → 100% | 55d → none |
| 15 | BBQRMS-43 Reports - Integrated reporting tool |  | 2011-01-27 A | 25% → 100% | 54d → none |
| 20 | BBQRMS-39 admin - Add/Modify Employees | 2011-01-20 A |  | 0% → 75% | 55d → 56.25d |
| 21 | BBQRMS-40 admin - Add/Modify Roles and Privs | 2011-01-25 A |  | 0% → 25% |  |
| 23 | **Iteration 3 (2/1-2/14)** | 2011-02-01 A |  | 0% → 14% | 44d → 45d |
| 27 | BBQRMS-30 Security - Users can clock in and clock out | 2011-02-01 A | 2011-02-04 A | 0% → 100% | 47d → none |
| 28 | BBQRMS-25 Security - Users can change their PIN | 2011-02-07 A |  | 0% → 50% |  |

## Version 7 (saved 2011-02-15)

Note of the change: Updated the project plan.

Last finish stays 2011-04-18. Complete tasks 11 → 15.

Changed:

| ID | Task | Start | Finish | Complete | Total float |
| --- | --- | --- | --- | --- | --- |
| 1 | **Iteration 1 (1/3-1/19)** |  |  | 91% → 95% |  |
| 10 | BBQRMS-18 Inventory Management - Receive an inventory order |  |  | 50% → 75% |  |
| 13 | **Iteration 2 (1/20-1/31)** |  |  | 42% → 83% |  |
| 16 | BBQRMS-33 Order Entry - Place and save customer order without taking payment |  | 2011-01-25 A | 25% → 100% | 59d → none |
| 17 | BBQRMS-37 Order Entry - Recall and modify saved customer order | 2011-01-26 A |  | 0% → 50% |  |
| 18 | BBQRMS-17 Inventory Management - Add Supplier |  |  | 25% → 75% | 55d → 59d |
| 19 | BBQRMS-57 Inventory Management - Place an Inventory Order | 2011-01-26 A | 2011-01-31 A | 0% → 100% | 55d → none |
| 20 | BBQRMS-39 admin - Add/Modify Employees |  | 2011-01-24 A | 75% → 100% | 56.25d → none |
| 21 | BBQRMS-40 admin - Add/Modify Roles and Privs |  |  | 25% → 50% |  |
| 23 | **Iteration 3 (2/1-2/14)** |  |  | 14% → 24% |  |
| 28 | BBQRMS-25 Security - Users can change their PIN |  | 2011-02-08 A | 50% → 100% | 47d → none |
| 29 | BBQRMS-28 Reports - Daily Sales Report | 2011-02-09 A |  | 0% → 25% |  |
| 30 | BBQRMS-56 Menu Management - Create/Edit/Delete Menu | 2011-02-01 A |  | 0% → 25% | 46d → 47.25d |
| 31 | BBQRMS-31 Menu Management - Create/Edit/Delete Menu Item | 2011-02-07 A |  | 0% → 25% |  |

## Version 8 (saved 2011-03-03)

Note of the change: Updated the project plan to reflect the current state of the project.

Last finish stays 2011-04-18. Complete tasks 15 → 27.

Removed: 36 BBQRMS-34 Cashiering - Split a Check; 38 BBQRMS-50 Dashboard - Display managers dashboard; 39 BBQRMS-51 Dashboard - Display whose on the clock; 47 BBQRMS-27 Reports - Weekly prime cost report; 51 BBQRMS-54 Dashboard - Display estimated daily profit.; 52 BBQRMS-55 Dashboard - Display estimated cost of goods

Changed:

| ID | Task | Start | Finish | Duration | Complete | Total float | Other |
| --- | --- | --- | --- | --- | --- | --- | --- |
| 1 | **Iteration 1 (1/3-1/19)** |  | 2011-01-19 A |  | 95% → 100% | 52d → none |  |
| 4 | Revised SSRS Due | 2011-01-19 A | 2011-01-19 A |  | 0% → 100% | 0d → none |  |
| 10 | BBQRMS-18 Inventory Management - Receive an inventory order |  | 2011-01-19 A |  | 75% → 100% | 52d → none |  |
| 12 | Graded Checkpoint 1 | 2011-01-19 A | 2011-01-19 A |  | 0% → 100% | 0d → none |  |
| 13 | **Iteration 2 (1/20-1/31)** |  |  |  | 83% → 97% |  |  |
| 17 | BBQRMS-37 Order Entry - Recall and modify saved customer order |  |  |  | 50% → 75% |  |  |
| 18 | BBQRMS-17 Inventory Management - Add Supplier |  | 2011-01-25 A |  | 75% → 100% | 59d → none |  |
| 21 | BBQRMS-40 admin - Add/Modify Roles and Privs |  | 2011-01-31 A |  | 50% → 100% | 55d → none |  |
| 22 | Graded Progress Check 2 | 2011-01-31 A | 2011-01-31 A |  | 0% → 100% | 0d → none |  |
| 23 | **Iteration 3 (2/1-2/14)** |  |  |  | 24% → 79% |  |  |
| 24 | BBQRMS-36 Cashiering - Accept payment for saved customer order | 2011-02-01 A | 2011-02-07 A |  | 0% → 100% | 45d → none |  |
| 25 | BBQRMS-35 Order Entry - Take a customer order and accept payment | 2011-02-08 A | 2011-02-14 A |  | 0% → 100% | 45d → none |  |
| 26 | BBQRMS-19 Inventory Management - Reconcile Inventory | 2011-02-01 A |  |  | 0% → 75% |  |  |
| 30 | BBQRMS-56 Menu Management - Create/Edit/Delete Menu |  | 2011-02-04 A |  | 25% → 100% | 47.25d → none |  |
| 32 | **Iteration 4 (2/15-2/28)** | 2011-02-15 A | 2011-03-01 → 2011-03-09 (+8d) | 11d? → 17d? | 0% → 5% | 1d → 28d |  |
| 37 | Test Plan | 2011-02-16 A | 2011-02-16 A |  | 0% → 100% | 0d → none |  |
| 38 | System testing | 2011-02-17 → 2011-02-28 (+11d) | 2011-02-23 → 2011-03-04 (+9d) |  |  |  |  |
| 39 | Testing Results | 2011-02-23 → 2011-03-05 (+10d) | 2011-02-23 → 2011-03-05 (+10d) |  |  |  | constraint must finish on 2011-02-23 → must finish on 2011-03-05 |
| 40 | Graded Checkpoint 3 | 2011-02-28 → 2011-03-09 (+9d) | 2011-02-28 → 2011-03-09 (+9d) |  |  |  | constraint must finish on 2011-02-28 → must finish on 2011-03-09 |
| 41 | **Iteration 5 (3/1-3/14)** | 2011-03-01 A |  |  | 0% → 29% |  |  |
| 44 | BBQRMS-38 Cashiering - Take multiple methods of payment for a customer order | 2011-03-01 A | 2011-03-07 A |  | 0% → 100% | 25d → none |  |
| 46 | BBQRMS-5 Update UI for user management to be touch friendly | 2011-03-01 A | 2011-03-04 A |  | 0% → 100% | 31d → none |  |

## Version 9 (saved 2011-03-21)

Note of the change: Updated the project plan again.

Last finish stays 2011-04-18. Complete tasks 27 → 35.

Changed:

| ID | Task | Start | Finish | Duration | Complete | Total float | Predecessors | Other |
| --- | --- | --- | --- | --- | --- | --- | --- | --- |
| 13 | **Iteration 2 (1/20-1/31)** |  | 2011-01-31 A |  | 97% → 100% | 55d → none |  |  |
| 22 | **Iteration 3 (2/1-2/14)** |  | 2011-02-14 A |  | 79% → 100% | 45d → none |  |  |
| 25 | BBQRMS-19 Inventory Management - Reconcile Inventory |  | 2011-02-14 A |  | 75% → 100% | 44d → none |  |  |
| 29 | BBQRMS-31 Menu Management - Create/Edit/Delete Menu Item |  | 2011-02-11 A |  | 25% → 100% | 46d → none |  |  |
| 30 | **Iteration 4 (2/15-2/28)** |  | 2011-03-09 → 2011-02-28 A (-9d) | 17d? → 10d | 5% → 100% | 28d → none |  |  |
| 31 | BBQRMS-32 Cook Screen - Complete a Customer Order | 2011-02-15 A | 2011-02-21 A |  | 0% → 100% | 40d → none |  | resources Scott → Scott; Jerod |
| 32 | BBQRMS-38 Cashiering - Take multiple methods of payment for a customer order | 2011-03-01 A → 2011-02-21 A (-8d) | 2011-03-07 A → 2011-02-25 A (-10d) |  |  |  |  |  |
| 33 | BBQRMS-5 Update UI for user management to be touch friendly | 2011-03-01 A → 2011-02-24 A (-5d) | 2011-03-04 A → 2011-02-28 A (-4d) | 4d → 3d |  |  |  |  |
| 34 | Test Plan |  |  |  |  |  |  | resources Jerod; Jessie → Jerod; Jessie; Mike |
| 35 | System testing | 2011-02-28 → 2011-02-21 A (-7d) | 2011-03-04 → 2011-02-25 A (-7d) |  | 0% → 100% | 0d → none |  |  |
| 36 | Testing Results | 2011-03-05 → 2011-02-23 A (-10d) | 2011-03-05 → 2011-02-25 A (-8d) | 0d → 3d | 0% → 100% | 0d → none | 35 → none | resources none → Jerod |
| 37 | **Iteration 5 (3/1-3/14)** |  |  |  | 29% → 82% |  |  |  |
| 38 | BBQRMS-29 Reports - Inventory turns | 2011-03-08 → 2011-03-01 A (-7d) | 2011-03-09 → 2011-03-02 (-7d) |  | 0% → 50% | 28d → 33d | 15, 40 → 15, 25, 40 |  |
| 39 | BBQRMS-2 Reports - Daily Shopping List | 2011-02-22 → 2011-03-04 A (+10d) | 2011-02-24 → 2011-03-08 (+12d) |  | 0% → 50% | 37d → 29d | 41, 15 → 15 |  |
| 40 | BBQRMS-52 Cashiering - Open Cash drawer | 2011-03-01 → 2011-03-09 A (+8d) | 2011-03-07 → 2011-03-09 A (+2d) | 5d → 1d | 0% → 100% | 28d → none |  | constraint none → finish no earlier than 2011-03-11 |
| 41 | BBQRMS-48 Cashiering - Print Receipt | 2011-02-15 → 2011-03-09 A (+22d) | 2011-02-21 → 2011-03-14 A (+21d) | 5d → 4d | 0% → 100% | 37d → none |  | constraint none → finish no earlier than 2011-03-14 |
| 42 | BBQRMS-53 Cashiering - Process Credit Card | 2011-03-08 → 2011-03-01 A (-7d) |  | 5d → 10d | 0% → 75% |  |  |  |
| 43 | BBQRMS-16 Inventory Management - Touch-screen | 2011-02-15 → 2011-03-07 A (+20d) | 2011-02-15 → 2011-03-11 (+24d) | 1d? → 5d | 0% → 75% | 44d → 26d |  | constraint none → start no earlier than 2011-03-07; resources Jessie → Jerod |
| 44 | System testing | 2011-03-01 A | 2011-03-14 A |  | 0% → 100% | 25d → none |  |  |
| 45 | **Iteration 6 (3/15-4/4)** | 2011-03-15 → 2011-03-14 A (-1d) |  | 15d → 16d | 0% → 40% | 0d → 10d |  | constraint start no earlier than 2011-03-15 → none |
| 46 | BBQRMS-37 Order Entry - Recall and modify saved customer order | 2011-01-26 A → 2011-03-14 A (+47d) | 2011-01-31 → 2011-03-17 (+45d) |  |  | 55d → 22d |  |  |
| 47 | BBQRMS-28 Reports - Daily Sales Report | 2011-02-09 A → 2011-03-14 A (+33d) | 2011-02-10 → 2011-03-15 (+33d) |  |  | 47d → 24d | 15, 27 → 15 |  |
| 48 | Beta testing | 2011-03-15 → 2011-03-14 A (-1d) | 2011-03-23 → 2011-03-18 (-5d) | 7d → 5d | 0% → 50% | 0d → 21d |  | constraint as late as possible → start no earlier than 2011-03-14; resources Jerod; Scott; Mike; Jessie → Jessie |
| 49 | Beta Test Results |  |  |  |  |  | 48 → none | resources none → Jerod |
| 50 | Graded Checkpoint 3 | 2011-03-09 → 2011-03-21 (+12d) | 2011-03-09 → 2011-03-21 (+12d) |  |  | 0d → 21d |  | constraint must finish on 2011-03-09 → start no earlier than 2011-03-21; resources none → Jerod |
| 51 | Bug Fixing | 2011-03-24 → 2011-03-14 A (-10d) | 2011-04-01 → 2011-03-22 (-10d) |  | 0% → 75% | 11d → 19d |  | constraint none → start no earlier than 2011-03-14 |
| 52 | System Testing | 2011-03-24 → 2011-03-21 (-3d) |  | 7d → 10d |  |  |  | constraint none → start no earlier than 2011-03-21 |
| 53 | Graded Checkpoint 4 |  |  |  |  |  |  | resources none → Jerod |

## Version 10 (saved 2011-03-22)

Note of the change: Updated project plan.

Last finish stays 2011-04-18. Complete tasks 35 → 40.

Added:

| ID | Task | Duration | Start | Finish | Constraint | Resources |
| --- | --- | --- | --- | --- | --- | --- |
| 43 | Bug Fixing | 7d | 2011-03-14 A | 2011-03-22 A | start no earlier than 2011-03-14 | Scott; Mike |

Removed: 38 BBQRMS-29 Reports - Inventory turns

Changed:

| ID | Task | Start | Finish | Duration | Complete | Total float | Predecessors | Other |
| --- | --- | --- | --- | --- | --- | --- | --- | --- |
| 37 | **Iteration 5 (3/1-3/14)** |  | 2011-03-14 → 2011-03-22 (+8d) | 10d → 16d | 82% → 97% | 25d → 17.5d |  |  |
| 38 | BBQRMS-28 Reports - Daily Sales Report | 2011-03-14 A → 2011-03-01 A (-13d) | 2011-03-15 → 2011-03-02 A (-13d) |  | 25% → 100% | 24d → none |  |  |
| 41 | BBQRMS-53 Cashiering - Process Credit Card |  | 2011-03-14 A |  | 75% → 100% | 25d → none |  |  |
| 45 | **Iteration 6 (3/15-4/4)** |  |  |  | 40% → 54% |  |  |  |
| 46 | BBQRMS-37 Order Entry - Recall and modify saved customer order |  | 2011-03-17 A |  | 75% → 100% | 22d → none |  |  |
| 47 | BBQRMS-2 Reports - Daily Shopping List | 2011-03-04 A → 2011-03-21 A (+17d) | 2011-03-08 → 2011-03-23 (+15d) |  |  | 29d → 18d | 15 → 15, 42 |  |
| 48 | Beta testing |  | 2011-03-18 A |  | 50% → 100% | 21d → none |  |  |
| 54 | **Iteration 7 (4/5-4/18)** | 2011-04-05 → 2011-01-03 (-92d) |  | 10d → 76d |  |  |  | constraint start no earlier than 2011-04-05 → none |
| 55 | Burn in | 2011-04-05 → 2011-01-03 (-92d) | 2011-04-18 → 2011-01-14 (-94d) |  |  | 0d → 66d |  |  |
