# BBQRMS Project Plan 2011

How a schedule from MS Project changed from version to version. A marks actual dates.

## Version 1 (saved 2011-01-11)

Note of the change: Put in the resource names on the stories we copied in from JIRA. Allocated the rest of the stories to iterations. Put the Constraint Type and Constraint date columns in the view and set them appropriately for the due dates ("Must Finish On"), the iterations ("Start No Earlier Than") and the testing tasks ("As Late As Possible"). Left blank lines in the project plan where we theoretically have space to add more stories or other work. Estimated the items assigned to me. Set the tasks we'd do as a group to "Fixed Duration" instead of "Fixed Units" which helped to make leveling work right. Put in my estimates for the duration of the testing tasks.

| ID | WBS | Task | Duration | Start | Finish | Predecessors | Total float | Constraint |
| --- | --- | --- | --- | --- | --- | --- | --- | --- |
| 1 | 1 | **Iteration 1 (1/3-1/19)** | 13d | 2011-01-03 | 2011-01-19 |  | 5d |  |
| 2 |  | Revise Project Plan | 6d | 2011-01-03 | 2011-01-10 |  | 5d |  |
| 3 |  | Revise SSRS | 2d | 2011-01-11 | 2011-01-12 | 2 | 5d |  |
| 4 |  | Revised SSRS Due | 0d | 2011-01-19 | 2011-01-19 | 2, 3 | 0d | must finish on 2011-01-19 |
| 5 |  | DB Create Script | 5d | 2011-01-13 | 2011-01-19 |  | 63d |  |
| 6 |  | BBQRMS-42 Shell - Main application navigation | 2d | 2011-01-13 | 2011-01-14 |  | 65d |  |
| 7 |  | BBQRMS-44 Shell - Setup database server and communication | 1d | 2011-01-17 | 2011-01-17 |  | 64d |  |
| 8 |  | BBQRMS-18 Inventory Management - Receive an inventory order | 5d | 2011-01-13 | 2011-01-19 |  | 63d |  |
| 9 |  | BBQRMS-45 Order Entry - Design User Interface for Placing Customer Orders | 5d | 2011-01-13 | 2011-01-19 |  | 55d |  |
| 10 |  | BBQRMS-22 Security - Users can log in | 0.5d | 2011-01-18 | 2011-01-18 | 6, 7 | 64d |  |
| 11 |  | BBQRMS-23 Security - Users can log out | 0.5d | 2011-01-18 | 2011-01-18 | 10 | 64d |  |
| 12 |  | Graded Checkpoint 1 | 0d | 2011-01-19 | 2011-01-19 |  | 0d | must finish on 2011-01-19 |
| 13 | 2 | **Iteration 2 (1/20-1/31)** | 8d | 2011-01-20 | 2011-01-31 |  | 8d | start no earlier than 2011-01-20 |
| 14 |  | BBQRMS-24 Security - Program features are limited by assigned user roles | 2d | 2011-01-20 | 2011-01-21 |  | 61d |  |
| 15 |  | BBQRMS-43 Reports - Integrated reporting tool | 6d | 2011-01-24 | 2011-01-31 |  | 55d |  |
| 16 |  | BBQRMS-33 Order Entry - Place and save customer order without taking payment | 4d | 2011-01-20 | 2011-01-25 | 9 | 59d |  |
| 17 |  | BBQRMS-37 Order Entry - Recall and modify saved customer order | 4d | 2011-01-26 | 2011-01-31 | 9 | 55d |  |
| 18 |  | BBQRMS-17 Inventory Management - Add Supplier | 8d | 2011-01-20 | 2011-01-31 |  | 55d |  |
| 19 |  | BBQRMS-31 Menu Management - Create Menu Item | 8d | 2011-01-20 | 2011-01-31 |  | 55d |  |
| 20 |  | Graded Progress Check 2 | 0d | 2011-01-31 | 2011-01-31 |  | 0d | must finish on 2011-01-31 |
| 21 | 3 | **Iteration 3 (2/1-2/14)** | 10d | 2011-02-01 | 2011-02-14 |  | 45d | start no earlier than 2011-02-01 |
| 22 |  | BBQRMS-36 Cashiering - Accept payment for saved customer order | 5d | 2011-02-01 | 2011-02-07 |  | 50d |  |
| 23 |  | BBQRMS-35 Order Entry - Take a customer order and accept payment | 5d | 2011-02-08 | 2011-02-14 |  | 45d |  |
| 24 |  | BBQRMS-19 Inventory Management - Reconcile Inventory | 10d | 2011-02-01 | 2011-02-14 |  | 45d |  |
| 25 |  | BBQRMS-30 Security - Users can clock in and clock out | 4d | 2011-02-01 | 2011-02-04 |  | 51d |  |
| 26 |  | BBQRMS-25 Security - Users can change their PIN | 2d | 2011-02-07 | 2011-02-08 |  | 49d |  |
| 27 |  | BBQRMS-28 Reports - Daily Sales Report | 2d | 2011-02-09 | 2011-02-10 |  | 47d |  |
| 28 |  | BBQRMS-39 admin - Add/Modify Employees | 5d | 2011-02-01 | 2011-02-07 |  | 50d |  |
| 29 |  | BBQRMS-40 admin - Add/Modify Roles and Privs | 5d | 2011-02-08 | 2011-02-14 |  | 45d |  |
| 30 | 4 | **Iteration 4 (2/15-2/28)** | 10d? | 2011-02-15 | 2011-02-28 |  | 3d | start no earlier than 2011-02-15 |
| 31 |  | BBQRMS-2 Reports - Daily Shopping List | 3d | 2011-02-15 | 2011-02-17 |  | 42d |  |
| 32 |  | BBQRMS-32 Cook Screen - Complete a Customer Order | 1d? | 2011-02-15 | 2011-02-15 |  | 44d |  |
| 33 |  | BBQRMS-34 Cashiering - Split a Check | 1d? | 2011-02-16 | 2011-02-16 |  | 43d |  |
| 34 |  | BBQRMS-16 Inventory Management - Touch-screen | 1d? | 2011-02-15 | 2011-02-15 |  | 44d |  |
| 36 |  | Test Plan | 2d | 2011-02-18 | 2011-02-21 |  | 0d | as late as possible |
| 37 |  | System testing | 2d | 2011-02-22 | 2011-02-23 | 36 | 0d | as late as possible |
| 38 |  | Testing Results | 0d | 2011-02-23 | 2011-02-23 | 37 | 0d | must finish on 2011-02-23 |
| 39 |  | Graded Checkpoint 3 | 0d | 2011-02-28 | 2011-02-28 |  | 0d | must finish on 2011-02-28 |
| 40 | 5 | **Iteration 5 (3/1-3/14)** | 3d? | 2011-03-01 | 2011-03-03 |  | 32d | start no earlier than 2011-03-01 |
| 41 |  | BBQRMS-26 Reports - Income statement | 1d | 2011-03-01 | 2011-03-01 |  | 34d |  |
| 42 |  | BBQRMS-29 Reports - Inventory turns | 1d | 2011-03-02 | 2011-03-02 |  | 33d |  |
| 43 |  | BBQRMS-27 Reports - Weekly prime cost report | 1d | 2011-03-03 | 2011-03-03 |  | 32d |  |
| 44 |  | BBQRMS-38 Cashiering - Take multiple methods of payment for a customer order | 1d? | 2011-03-01 | 2011-03-01 |  | 34d |  |
| 45 |  | BBQRMS-5 Update UI for user management to be touch friendly | 1d? | 2011-03-01 | 2011-03-01 |  | 34d |  |
| 47 | 6 | **Iteration 6 (3/15-4/4)** | 15d | 2011-03-15 | 2011-04-04 |  | 0d | start no earlier than 2011-03-15 |
| 48 |  | Beta testing | 7d | 2011-03-15 | 2011-03-23 |  | 0d | as late as possible |
| 49 |  | Beta Test Results | 0d | 2011-03-23 | 2011-03-23 | 48 | 0d | must finish on 2011-03-23 |
| 51 |  | Graded Checkpoint 4 | 0d | 2011-04-04 | 2011-04-04 |  | 0d | must finish on 2011-04-04 |
| 52 | 7 | **Iteration 7 (4/5-4/18)** | 3d | 2011-04-13 | 2011-04-18 |  | 0d | start no earlier than 2011-04-05 |
| 54 |  | Final Delivery to Instructor | 0d | 2011-04-13 | 2011-04-13 |  | 0d | must finish on 2011-04-13 |
| 55 |  | Project Go Live | 0d | 2011-04-18 | 2011-04-18 |  | 0d | must finish on 2011-04-18 |

## Version 2 (saved 2011-01-13)

Note of the change: Renamed my assignment.

Last finish stays 2011-04-18.

Changed:

| ID | Task | Other |
| --- | --- | --- |
| 5 | Build Initial Database structure | was named DB Create Script |

## Version 3 (saved 2011-01-13)

Note of the change: Updated the plan to include Bob and adjusted the estimates.

Last finish stays 2011-04-18.

Added:

| ID | Task | Duration | Start | Finish | Resources |
| --- | --- | --- | --- | --- | --- |
| 20 | BBQRMS-31 Menu Management - Create/Edit/Delete Menu | 8d | 2011-01-20 | 2011-01-31 | Bob; Jerod [50%] |
| 30 | BBQRMS-31 Menu Management - Create/Edit/Delete Menu Item | 10d | 2011-02-01 | 2011-02-14 | Bob; Jerod [50%] |
| 33 | Cashiering - Print Receipt | 5d | 2011-02-15 | 2011-02-21 | Mike |
| 37 | Dashboard - Display managers dashboard | 1d | 2011-02-15 | 2011-02-15 | Jerod |
| 38 | Dashboard - Display whose on the clock | 1d | 2011-02-15 | 2011-02-15 | Bob |
| 47 | Cashiering - Open Cash drawer | 5d | 2011-03-01 | 2011-03-07 | Mike |
| 49 | Cashiering - Process Credit Card | 5d | 2011-03-01 | 2011-03-07 | Scott |
| 50 | Dashboard - Display estimated daily profit. | 3d | 2011-03-01 | 2011-03-03 | Jerod |
| 51 | Dashboard - Display estimated cost of goods | 3d | 2011-03-01 | 2011-03-03 | Jerod |
| 53 | System testing | 10d | 2011-03-01 | 2011-03-14 | Jessie; Bob |
| 57 | Bug Fixing | 10d | 2011-03-15 | 2011-03-28 | Jerod; Scott; Mike; Jessie |
| 58 | System Testing | 7d | 2011-03-15 | 2011-03-23 | Bob |
| 61 | Burn in | 10d | 2011-04-05 | 2011-04-18 | Jerod; Scott; Mike; Jessie; Bob |
| 64 | Dashboard - Display Current turnaround time | 1d? | 2011-04-05 | 2011-04-05 |  |
| 65 | Dashboard - Display hourly income graph | 1d? | 2011-04-05 | 2011-04-05 |  |
| 66 | Dashboard - Display menu items sold bar graph | 1d? | 2011-04-05 | 2011-04-05 |  |

Removed: 19 BBQRMS-31 Menu Management - Create Menu Item

Changed:

| ID | Task | Start | Finish | Duration | Total float | Other |
| --- | --- | --- | --- | --- | --- | --- |
| 19 | BBQRMS-39 admin - Add/Modify Employees | 2011-02-01 → 2011-01-20 (-12d) | 2011-02-07 → 2011-01-31 (-7d) | 5d → 8d | 50d → 55d | resources Jerod → Jerod [50%] |
| 29 | BBQRMS-40 admin - Add/Modify Roles and Privs |  |  |  |  | resources Jerod → Jerod [50%] |
| 34 | BBQRMS-32 Cook Screen - Complete a Customer Order |  | 2011-02-15 → 2011-02-21 (+6d) | 1d? → 5d | 44d → 40d |  |
| 35 | BBQRMS-34 Cashiering - Split a Check |  | 2011-02-16 → 2011-02-22 (+6d) | 1d? → 5d | 43d → 39d |  |
| 39 | Test Plan | 2011-02-18 → 2011-02-15 (-3d) | 2011-02-21 → 2011-02-15 (-6d) | 2d → 1d |  | resources none → Bob; Jerod |
| 40 | System testing | 2011-02-22 → 2011-02-16 (-6d) | 2011-02-23 → 2011-02-28 (+5d) | 2d → 9d | 0d → -3d | resources none → Bob; Jerod |
| 43 | **Iteration 5 (3/1-3/14)** |  | 2011-03-03 → 2011-03-14 (+11d) | 3d? → 10d | 32d → 25d |  |
| 48 | BBQRMS-38 Cashiering - Take multiple methods of payment for a customer order |  | 2011-03-01 → 2011-03-07 (+6d) | 1d? → 5d | 34d → 30d |  |
| 52 | BBQRMS-5 Update UI for user management to be touch friendly |  | 2011-03-01 → 2011-03-04 (+3d) | 1d? → 4d | 34d → 31d |  |
| 55 | Beta testing |  |  |  |  | resources Jerod; Scott; Mike; Jessie → Jerod; Scott; Mike; Jessie; Bob |
| 60 | **Iteration 7 (4/5-4/18)** | 2011-04-13 → 2011-04-05 (-8d) |  | 3d → 10d? |  |  |

## Version 4 (saved 2011-01-19)

Note of the change: I added the issues to jira and added the numbers to the tasks. I also reconciled the project plan with the SSRS.

Last finish stays 2011-04-18.

Added:

| ID | Task | Duration | Start | Finish | Predecessors | Resources |
| --- | --- | --- | --- | --- | --- | --- |
| 19 | BBQRMS-57 Inventory Management - Place an Inventory Order | 4d | 2011-01-26 | 2011-01-31 | 18 | Jessie |

Removed: 44 BBQRMS-26 Reports - Income statement; 64 Dashboard - Display Current turnaround time; 65 Dashboard - Display hourly income graph; 66 Dashboard - Display menu items sold bar graph

Changed:

| ID | Task | Start | Finish | Duration | Total float | Other |
| --- | --- | --- | --- | --- | --- | --- |
| 5 | BBQRMS-47 Build Initial Database structure |  |  |  |  | was named Build Initial Database structure |
| 14 | BBQRMS-24 Security - Program features are limited by assigned user roles | 2011-01-20 → 2011-01-28 (+8d) | 2011-01-21 → 2011-01-31 (+10d) |  | 61d → 55d |  |
| 15 | BBQRMS-43 Reports - Integrated reporting tool | 2011-01-24 → 2011-01-20 (-4d) | 2011-01-31 → 2011-01-27 (-4d) |  | 55d → 57d |  |
| 18 | BBQRMS-17 Inventory Management - Add Supplier |  | 2011-01-31 → 2011-01-25 (-6d) | 8d → 4d |  |  |
| 21 | BBQRMS-56 Menu Management - Create/Edit/Delete Menu |  |  |  |  | was named BBQRMS-31 Menu Management - Create/Edit/Delete Menu |
| 30 | BBQRMS-40 admin - Add/Modify Roles and Privs | 2011-02-08 → 2011-02-01 (-7d) | 2011-02-14 → 2011-02-07 (-7d) |  | 45d → 50d |  |
| 33 | BBQRMS-2 Reports - Daily Shopping List | 2011-02-15 → 2011-02-22 (+7d) | 2011-02-17 → 2011-02-24 (+7d) |  | 42d → 37d |  |
| 34 | BBQRMS-48 Cashiering - Print Receipt |  |  |  |  | was named Cashiering - Print Receipt |
| 36 | BBQRMS-34 Cashiering - Split a Check | 2011-02-16 → 2011-02-22 (+6d) | 2011-02-22 → 2011-02-28 (+6d) |  | 39d → 35d |  |
| 38 | BBQRMS-50 Dashboard - Display managers dashboard | 2011-02-15 → 2011-02-28 (+13d) | 2011-02-15 → 2011-02-28 (+13d) |  | 44d → 35d | was named Dashboard - Display managers dashboard |
| 39 | BBQRMS-51 Dashboard - Display whose on the clock | 2011-02-15 → 2011-02-28 (+13d) | 2011-02-15 → 2011-02-28 (+13d) |  | 44d → 35d | was named Dashboard - Display whose on the clock |
| 41 | System testing |  | 2011-02-28 → 2011-02-25 (-3d) | 9d → 8d | -3d → -2d |  |
| 45 | BBQRMS-29 Reports - Inventory turns | 2011-03-02 → 2011-03-09 (+7d) | 2011-03-02 → 2011-03-09 (+7d) |  | 33d → 28d |  |
| 46 | BBQRMS-27 Reports - Weekly prime cost report | 2011-03-03 → 2011-03-10 (+7d) | 2011-03-03 → 2011-03-10 (+7d) |  | 32d → 27d |  |
| 47 | BBQRMS-52 Cashiering - Open Cash drawer |  |  |  |  | was named Cashiering - Open Cash drawer |
| 49 | BBQRMS-53 Cashiering - Process Credit Card | 2011-03-01 → 2011-03-08 (+7d) | 2011-03-07 → 2011-03-14 (+7d) |  | 30d → 25d | was named Cashiering - Process Credit Card |
| 50 | BBQRMS-54 Dashboard - Display estimated daily profit. | 2011-03-01 → 2011-03-07 (+6d) | 2011-03-03 → 2011-03-09 (+6d) |  | 32d → 28d | was named Dashboard - Display estimated daily profit. |
| 51 | BBQRMS-55 Dashboard - Display estimated cost of goods | 2011-03-01 → 2011-03-10 (+9d) | 2011-03-03 → 2011-03-14 (+11d) |  | 32d → 25d | was named Dashboard - Display estimated cost of goods |
| 57 | Bug Fixing | 2011-03-15 → 2011-03-24 (+9d) | 2011-03-28 → 2011-04-04 (+7d) | 10d → 8d | 15d → 10d |  |
| 58 | System Testing | 2011-03-15 → 2011-03-24 (+9d) | 2011-03-23 → 2011-04-04 (+12d) | 7d → 8d | 18d → 10d |  |
| 60 | **Iteration 7 (4/5-4/18)** |  |  | 10d? → 10d |  |  |

## Version 5 (saved 2011-02-16)

Note of the change: I implemented Role Management and finished up employee management. There are still some minor features missing from employee management, but it's functionally complete.

Last finish stays 2011-04-18. Complete tasks 0 → 16.

Changed:

| ID | Task | Start | Finish | Duration | Complete | Total float | Predecessors | Other |
| --- | --- | --- | --- | --- | --- | --- | --- | --- |
| 1 | **Iteration 1 (1/3-1/19)** | 2011-01-03 A |  |  | 0% → 95% | 5d → 52d |  | baseline start none → 2011-01-03; baseline finish none → 2011-01-19 |
| 2 | Revise Project Plan | 2011-01-03 A | 2011-01-10 A |  | 0% → 100% | 5d → none |  | baseline start none → 2011-01-03; baseline finish none → 2011-01-10 |
| 3 | Revise SSRS | 2011-01-11 A | 2011-01-12 A |  | 0% → 100% | 5d → none |  | baseline start none → 2011-01-11; baseline finish none → 2011-01-12 |
| 4 | Revised SSRS Due |  |  |  |  |  |  | baseline start none → 2011-01-19; baseline finish none → 2011-01-19 |
| 5 | BBQRMS-47 Build Initial Database structure | 2011-01-13 A | 2011-01-19 A |  | 0% → 100% | 63d → none |  | baseline start none → 2011-01-13; baseline finish none → 2011-01-19 |
| 6 | BBQRMS-42 Shell - Main application navigation | 2011-01-13 A | 2011-01-14 A |  | 0% → 100% | 65d → none |  | baseline start none → 2011-01-13; baseline finish none → 2011-01-14 |
| 7 | BBQRMS-44 Shell - Setup database server and communication | 2011-01-17 A | 2011-01-17 A |  | 0% → 100% | 64d → none |  | baseline start none → 2011-01-17; baseline finish none → 2011-01-17 |
| 8 | BBQRMS-22 Security - Users can log in | 2011-01-18 A | 2011-01-18 A |  | 0% → 100% | 64d → none |  | baseline start none → 2011-01-18; baseline finish none → 2011-01-18 |
| 9 | BBQRMS-23 Security - Users can log out | 2011-01-18 A | 2011-01-18 A |  | 0% → 100% | 64d → none |  | baseline start none → 2011-01-18; baseline finish none → 2011-01-18 |
| 10 | BBQRMS-18 Inventory Management - Receive an inventory order | 2011-01-13 A |  |  | 0% → 75% | 63d → 52d |  | baseline start none → 2011-01-13; baseline finish none → 2011-01-19 |
| 11 | BBQRMS-45 Order Entry - Design User Interface for Placing Customer Orders | 2011-01-13 A | 2011-01-19 A |  | 0% → 100% | 55d → none |  | baseline start none → 2011-01-13; baseline finish none → 2011-01-19 |
| 12 | Graded Checkpoint 1 |  |  |  |  |  |  | baseline start none → 2011-01-19; baseline finish none → 2011-01-19 |
| 13 | **Iteration 2 (1/20-1/31)** | 2011-01-20 A |  |  | 0% → 91% | 8d → 55d |  | baseline start none → 2011-01-20; baseline finish none → 2011-01-31 |
| 14 | BBQRMS-24 Security - Program features are limited by assigned user roles | 2011-01-28 A | 2011-01-31 A |  | 0% → 100% | 55d → none |  | baseline start none → 2011-01-28; baseline finish none → 2011-01-31 |
| 15 | BBQRMS-43 Reports - Integrated reporting tool | 2011-01-20 A | 2011-01-27 A |  | 0% → 100% | 57d → none |  | baseline start none → 2011-01-20; baseline finish none → 2011-01-27 |
| 16 | BBQRMS-33 Order Entry - Place and save customer order without taking payment | 2011-01-20 A | 2011-01-25 A |  | 0% → 100% | 59d → none |  | baseline start none → 2011-01-20; baseline finish none → 2011-01-25 |
| 17 | BBQRMS-37 Order Entry - Recall and modify saved customer order | 2011-01-26 A |  |  | 0% → 50% |  |  | baseline start none → 2011-01-26; baseline finish none → 2011-01-31 |
| 18 | BBQRMS-17 Inventory Management - Add Supplier | 2011-01-20 A |  |  | 0% → 75% | 55d → 59d |  | baseline start none → 2011-01-20; baseline finish none → 2011-01-25 |
| 19 | BBQRMS-57 Inventory Management - Place an Inventory Order | 2011-01-26 A | 2011-01-31 A |  | 0% → 100% | 55d → none |  | baseline start none → 2011-01-26; baseline finish none → 2011-01-31 |
| 20 | BBQRMS-39 admin - Add/Modify Employees | 2011-01-20 A | 2011-01-31 → 2011-01-24 A (-7d) | 8d → 3d | 0% → 100% | 55d → none |  | resources Jerod [50%] → Jerod; baseline start none → 2011-01-20; baseline finish none → 2011-01-24 |
| 21 | BBQRMS-40 admin - Add/Modify Roles and Privs | 2011-02-01 → 2011-01-25 A (-7d) | 2011-02-07 → 2011-01-31 A (-7d) |  | 0% → 100% | 50d → none | none → 20 | resources Jerod [50%] → Jerod; baseline start none → 2011-01-25; baseline finish none → 2011-01-31 |
| 22 | Graded Progress Check 2 |  |  |  |  |  |  | baseline start none → 2011-01-31; baseline finish none → 2011-01-31 |
| 23 | **Iteration 3 (2/1-2/14)** | 2011-02-01 A |  |  | 0% → 24% |  |  | baseline start none → 2011-02-01; baseline finish none → 2011-02-14 |
| 24 | BBQRMS-36 Cashiering - Accept payment for saved customer order |  |  |  |  | 50d → 45d | none → 11 | baseline start none → 2011-02-01; baseline finish none → 2011-02-07 |
| 25 | BBQRMS-35 Order Entry - Take a customer order and accept payment |  |  |  |  |  | none → 24 | baseline start none → 2011-02-08; baseline finish none → 2011-02-14 |
| 26 | BBQRMS-19 Inventory Management - Reconcile Inventory |  |  |  |  | 45d → 44d | none → 10 | baseline start none → 2011-02-01; baseline finish none → 2011-02-14 |
| 27 | BBQRMS-30 Security - Users can clock in and clock out | 2011-02-01 A | 2011-02-04 A |  | 0% → 100% | 51d → none | none → 8, 9 | baseline start none → 2011-02-01; baseline finish none → 2011-02-04 |
| 28 | BBQRMS-25 Security - Users can change their PIN | 2011-02-07 A | 2011-02-08 A |  | 0% → 100% | 49d → none | none → 27 | baseline start none → 2011-02-07; baseline finish none → 2011-02-08 |
| 29 | BBQRMS-28 Reports - Daily Sales Report | 2011-02-09 A |  |  | 0% → 25% |  | none → 15, 28 | baseline start none → 2011-02-09; baseline finish none → 2011-02-10 |
| 30 | BBQRMS-56 Menu Management - Create/Edit/Delete Menu | 2011-01-20 → 2011-02-01 A (+12d) | 2011-01-31 → 2011-02-04 (+4d) | 8d → 4d | 0% → 25% | 55d → 47.25d |  | resources Bob; Jerod [50%] → Jerod; baseline start none → 2011-02-01; baseline finish none → 2011-02-04 |
| 31 | BBQRMS-31 Menu Management - Create/Edit/Delete Menu Item | 2011-02-01 → 2011-02-07 A (+6d) | 2011-02-14 → 2011-02-11 (-3d) | 10d → 5d | 0% → 25% | 45d → 46d | none → 30 | resources Bob; Jerod [50%] → Jerod; baseline start none → 2011-02-07; baseline finish none → 2011-02-11 |
| 32 | **Iteration 4 (2/15-2/28)** |  | 2011-02-28 → 2011-03-01 (+1d) | 10d? → 11d? |  | -1d → 1d |  | baseline start none → 2011-02-15; baseline finish none → 2011-03-01 |
| 33 | BBQRMS-48 Cashiering - Print Receipt |  |  |  |  | 40d → 37d |  | baseline start none → 2011-02-15; baseline finish none → 2011-02-21 |
| 34 | BBQRMS-2 Reports - Daily Shopping List |  |  |  |  |  | none → 33, 15 | baseline start none → 2011-02-22; baseline finish none → 2011-02-24 |
| 35 | BBQRMS-32 Cook Screen - Complete a Customer Order |  |  |  |  | 40d → 35d |  | baseline start none → 2011-02-15; baseline finish none → 2011-02-21 |
| 36 | BBQRMS-34 Cashiering - Split a Check |  |  |  |  |  | none → 24, 35 | baseline start none → 2011-02-22; baseline finish none → 2011-02-28 |
| 37 | BBQRMS-16 Inventory Management - Touch-screen |  |  |  |  |  | none → 26 | baseline start none → 2011-02-15; baseline finish none → 2011-02-15 |
| 38 | BBQRMS-50 Dashboard - Display managers dashboard |  |  |  |  | 35d → 34d |  | baseline start none → 2011-02-28; baseline finish none → 2011-02-28 |
| 39 | BBQRMS-51 Dashboard - Display whose on the clock | 2011-02-28 → 2011-03-01 (+1d) | 2011-02-28 → 2011-03-01 (+1d) |  |  | 35d → 34d | none → 38 | resources Bob → Jerod; baseline start none → 2011-03-01; baseline finish none → 2011-03-01 |
| 40 | Test Plan | 2011-02-15 → 2011-02-16 (+1d) | 2011-02-15 → 2011-02-16 (+1d) |  |  |  |  | resources Bob; Jerod → Jerod; Jessie; baseline start none → 2011-02-16; baseline finish none → 2011-02-16 |
| 41 | System testing | 2011-02-16 → 2011-02-17 (+1d) | 2011-02-25 → 2011-02-23 (-2d) | 8d → 5d |  | -2d → 0d |  | resources Bob; Jerod → Jerod; Jessie; baseline start none → 2011-02-17; baseline finish none → 2011-02-23 |
| 42 | Testing Results |  |  |  |  | -2d → 0d |  | baseline start none → 2011-02-23; baseline finish none → 2011-02-23 |
| 43 | Graded Checkpoint 3 |  |  |  |  |  |  | baseline start none → 2011-02-28; baseline finish none → 2011-02-28 |
| 44 | **Iteration 5 (3/1-3/14)** |  |  |  |  |  |  | baseline start none → 2011-03-01; baseline finish none → 2011-03-14 |
| 45 | BBQRMS-52 Cashiering - Open Cash drawer |  |  |  |  | 30d → 27d |  | baseline start none → 2011-03-01; baseline finish none → 2011-03-07 |
| 46 | BBQRMS-29 Reports - Inventory turns | 2011-03-09 → 2011-03-08 (-1d) |  | 1d → 2d |  | 28d → 27d | none → 15, 45 | baseline start none → 2011-03-09; baseline finish none → 2011-03-09 |
| 47 | BBQRMS-27 Reports - Weekly prime cost report |  |  |  |  |  | none → 15, 46 | baseline start none → 2011-03-10; baseline finish none → 2011-03-10 |
| 48 | BBQRMS-38 Cashiering - Take multiple methods of payment for a customer order |  |  |  |  | 30d → 25d |  | baseline start none → 2011-03-01; baseline finish none → 2011-03-07 |
| 49 | BBQRMS-53 Cashiering - Process Credit Card |  |  |  |  |  | none → 48 | baseline start none → 2011-03-08; baseline finish none → 2011-03-14 |
| 50 | BBQRMS-5 Update UI for user management to be touch friendly |  |  |  |  |  |  | baseline start none → 2011-03-01; baseline finish none → 2011-03-04 |
| 51 | BBQRMS-54 Dashboard - Display estimated daily profit. |  |  |  |  |  |  | baseline start none → 2011-03-07; baseline finish none → 2011-03-09 |
| 52 | BBQRMS-55 Dashboard - Display estimated cost of goods |  |  |  |  |  |  | baseline start none → 2011-03-10; baseline finish none → 2011-03-14 |
| 53 | System testing |  |  |  |  |  |  | resources Jessie; Bob → Jessie; baseline start none → 2011-03-01; baseline finish none → 2011-03-14 |
| 54 | **Iteration 6 (3/15-4/4)** |  |  |  |  |  |  | baseline start none → 2011-03-15; baseline finish none → 2011-04-04 |
| 55 | Beta testing |  |  |  |  |  |  | resources Jerod; Scott; Mike; Jessie; Bob → Jerod; Scott; Mike; Jessie; baseline start none → 2011-03-15; baseline finish none → 2011-03-23 |
| 56 | Beta Test Results |  |  |  |  |  |  | baseline start none → 2011-03-23; baseline finish none → 2011-03-23 |
| 57 | Bug Fixing |  | 2011-04-04 → 2011-04-01 (-3d) | 8d → 7d |  | 10d → 11d |  | resources Jerod; Scott; Mike; Jessie → Scott; Mike; baseline start none → 2011-03-24; baseline finish none → 2011-04-01 |
| 58 | System Testing |  | 2011-04-04 → 2011-04-01 (-3d) | 8d → 7d |  | 10d → 11d |  | resources Bob → Jerod; Jessie; baseline start none → 2011-03-24; baseline finish none → 2011-04-01 |
| 59 | Graded Checkpoint 4 |  |  |  |  |  |  | baseline start none → 2011-04-04; baseline finish none → 2011-04-04 |
| 60 | **Iteration 7 (4/5-4/18)** |  |  |  |  |  |  | baseline start none → 2011-04-05; baseline finish none → 2011-04-18 |
| 61 | Burn in |  |  |  |  |  |  | resources Jerod; Scott; Mike; Jessie; Bob → Jerod; Scott; Mike; Jessie; baseline start none → 2011-04-05; baseline finish none → 2011-04-18 |
| 62 | Final Delivery to Instructor |  |  |  |  |  |  | baseline start none → 2011-04-13; baseline finish none → 2011-04-13 |
| 63 | Project Go Live |  |  |  |  |  |  | baseline start none → 2011-04-18; baseline finish none → 2011-04-18 |

## Version 6 (saved 2011-02-17)

Note of the change: Updated the project plan.

Last finish stays 2011-04-18. Complete tasks 16 → 18.

Changed:

| ID | Task | Finish | Complete | Total float |
| --- | --- | --- | --- | --- |
| 1 | **Iteration 1 (1/3-1/19)** |  | 95% → 99% | 52d → 0d |
| 10 | BBQRMS-18 Inventory Management - Receive an inventory order | 2011-01-19 A | 75% → 100% | 52d → none |
| 13 | **Iteration 2 (1/20-1/31)** |  | 91% → 94% |  |
| 18 | BBQRMS-17 Inventory Management - Add Supplier | 2011-01-25 A | 75% → 100% | 59d → none |

## Version 7 (saved 2011-03-15)

Note of the change: Updated the project plan to reflect a more accurate picture. Good news! We are only one iteration behind! I think we can over come that!

Last finish stays 2011-04-18. Complete tasks 18 → 34.

Removed: 36 BBQRMS-34 Cashiering - Split a Check; 38 BBQRMS-50 Dashboard - Display managers dashboard; 39 BBQRMS-51 Dashboard - Display whose on the clock; 47 BBQRMS-27 Reports - Weekly prime cost report; 51 BBQRMS-54 Dashboard - Display estimated daily profit.; 52 BBQRMS-55 Dashboard - Display estimated cost of goods

Changed:

| ID | Task | Start | Finish | Duration | Complete | Total float | Predecessors | Other |
| --- | --- | --- | --- | --- | --- | --- | --- | --- |
| 1 | **Iteration 1 (1/3-1/19)** |  | 2011-01-19 A |  | 99% → 100% | 0d → none |  |  |
| 4 | Revised SSRS Due | 2011-01-19 A | 2011-01-19 A |  | 0% → 100% | 0d → none |  |  |
| 12 | Graded Checkpoint 1 | 2011-01-19 A | 2011-01-19 A |  | 0% → 100% | 0d → none |  |  |
| 13 | **Iteration 2 (1/20-1/31)** |  | 2011-01-31 A |  | 94% → 100% | 55d → none |  |  |
| 21 | Graded Progress Check 2 | 2011-01-31 A | 2011-01-31 A |  | 0% → 100% | 0d → none |  |  |
| 22 | **Iteration 3 (2/1-2/14)** |  | 2011-02-14 A |  | 24% → 100% | 45d → none |  |  |
| 23 | BBQRMS-36 Cashiering - Accept payment for saved customer order | 2011-02-01 A | 2011-02-07 A |  | 0% → 100% | 45d → none |  |  |
| 24 | BBQRMS-35 Order Entry - Take a customer order and accept payment | 2011-02-08 A | 2011-02-14 A |  | 0% → 100% | 45d → none |  |  |
| 25 | BBQRMS-19 Inventory Management - Reconcile Inventory | 2011-02-01 A | 2011-02-14 A |  | 0% → 100% | 44d → none |  |  |
| 28 | BBQRMS-56 Menu Management - Create/Edit/Delete Menu |  | 2011-02-04 A |  | 25% → 100% | 47.25d → none |  |  |
| 29 | BBQRMS-31 Menu Management - Create/Edit/Delete Menu Item |  | 2011-02-11 A |  | 25% → 100% | 46d → none |  |  |
| 30 | **Iteration 4 (2/15-2/28)** | 2011-02-15 A | 2011-03-01 → 2011-02-28 A (-1d) | 11d? → 10d | 0% → 100% | 1d → none |  |  |
| 31 | BBQRMS-32 Cook Screen - Complete a Customer Order | 2011-02-15 A | 2011-02-21 A |  | 0% → 100% | 35d → none |  | resources Scott → Scott; Jerod |
| 32 | BBQRMS-38 Cashiering - Take multiple methods of payment for a customer order | 2011-03-01 → 2011-02-21 A (-8d) | 2011-03-07 → 2011-02-25 A (-10d) |  | 0% → 100% | 25d → none |  |  |
| 33 | BBQRMS-5 Update UI for user management to be touch friendly | 2011-03-01 → 2011-02-24 A (-5d) | 2011-03-04 → 2011-02-28 A (-4d) | 4d → 3d | 0% → 100% | 31d → none |  |  |
| 34 | Test Plan | 2011-02-16 A | 2011-02-16 A |  | 0% → 100% | 0d → none |  | resources Jerod; Jessie → Jerod; Jessie; Mike |
| 35 | System testing | 2011-02-17 → 2011-02-21 A (+4d) | 2011-02-23 → 2011-02-25 A (+2d) |  | 0% → 100% | 0d → none |  |  |
| 36 | Testing Results | 2011-02-23 A | 2011-02-23 → 2011-02-25 A (+2d) | 0d → 3d | 0% → 100% | 0d → none | 35 → none | constraint must finish on 2011-02-23 → must finish on 2011-03-05; resources none → Jerod |
| 37 | **Iteration 5 (3/1-3/14)** | 2011-03-01 A |  |  | 0% → 71% |  |  |  |
| 38 | BBQRMS-29 Reports - Inventory turns | 2011-03-08 → 2011-03-01 A (-7d) | 2011-03-09 → 2011-03-02 (-7d) |  | 0% → 50% | 27d → 33d | 15, 40 → 15, 25, 40 |  |
| 39 | BBQRMS-2 Reports - Daily Shopping List | 2011-02-22 → 2011-03-04 A (+10d) | 2011-02-24 → 2011-03-08 (+12d) |  | 0% → 50% | 37d → 29d | 41, 15 → 15 |  |
| 40 | BBQRMS-52 Cashiering - Open Cash drawer | 2011-03-01 → 2011-03-09 A (+8d) | 2011-03-07 → 2011-03-09 A (+2d) | 5d → 1d | 0% → 100% | 27d → none |  | constraint none → finish no earlier than 2011-03-11 |
| 41 | BBQRMS-48 Cashiering - Print Receipt | 2011-02-15 → 2011-03-09 A (+22d) | 2011-02-21 → 2011-03-14 (+21d) | 5d → 4d | 0% → 94% | 37d → 25d |  | constraint none → finish no earlier than 2011-03-14 |
| 42 | BBQRMS-53 Cashiering - Process Credit Card | 2011-03-08 → 2011-03-01 A (-7d) |  | 5d → 10d | 0% → 38% |  |  |  |
| 43 | BBQRMS-16 Inventory Management - Touch-screen | 2011-02-15 → 2011-03-07 A (+20d) | 2011-02-15 → 2011-03-11 (+24d) | 1d? → 5d | 0% → 75% | 44d → 26d |  | constraint none → start no earlier than 2011-03-07; resources Jessie → Jerod |
| 44 | System testing | 2011-03-01 A | 2011-03-14 A |  | 0% → 100% | 25d → none |  |  |
| 45 | Graded Checkpoint 3 | 2011-02-28 → 2011-03-14 (+14d) | 2011-02-28 → 2011-03-14 (+14d) |  |  | 0d → 26d |  | constraint must finish on 2011-02-28 → start no earlier than 2011-03-14; resources none → Jerod |
| 46 | **Iteration 6 (3/15-4/4)** | 2011-03-15 → 2011-03-14 A (-1d) |  | 15d → 16d | 0% → 13% | 0d → 10d |  | constraint start no earlier than 2011-03-15 → none |
| 47 | BBQRMS-37 Order Entry - Recall and modify saved customer order | 2011-01-26 A → 2011-03-14 A (+47d) | 2011-01-31 → 2011-03-17 (+45d) |  | 50% → 75% | 55d → 22d |  |  |
| 48 | BBQRMS-28 Reports - Daily Sales Report | 2011-02-09 A → 2011-03-14 A (+33d) | 2011-02-10 → 2011-03-15 (+33d) |  |  | 47d → 24d | 15, 27 → 15 |  |
| 50 | Beta Test Results |  |  |  |  |  |  | resources none → Jerod |
| 51 | Bug Fixing | 2011-03-24 → 2011-03-14 (-10d) | 2011-04-01 → 2011-03-22 (-10d) |  |  | 11d → 19d |  | constraint none → start no earlier than 2011-03-14 |
| 52 | System Testing | 2011-03-24 → 2011-03-21 (-3d) | 2011-04-01 → 2011-03-29 (-3d) |  |  | 11d → 14d |  | constraint none → start no earlier than 2011-03-21 |
| 53 | Graded Checkpoint 4 |  |  |  |  |  |  | resources none → Jerod |

## Version 8 (saved 2011-03-24)

Note of the change: Added the inventorylocationtypes table. and worked on the quick inventory screen. This one may break you. Please forgive me.

Last finish stays 2011-04-18. Complete tasks 34 → 40.

Added:

| ID | Task | Duration | Start | Finish | Constraint | Resources |
| --- | --- | --- | --- | --- | --- | --- |
| 43 | Bug Fixing | 7d | 2011-03-14 A | 2011-03-22 A | start no earlier than 2011-03-14 | Scott; Mike |

Removed: 38 BBQRMS-29 Reports - Inventory turns

Changed:

| ID | Task | Start | Finish | Duration | Complete | Total float | Predecessors | Other |
| --- | --- | --- | --- | --- | --- | --- | --- | --- |
| 37 | **Iteration 5 (3/1-3/14)** |  | 2011-03-14 → 2011-03-22 (+8d) | 10d → 16d | 71% → 97% | 25d → 17.5d |  |  |
| 38 | BBQRMS-28 Reports - Daily Sales Report | 2011-03-14 A → 2011-03-01 A (-13d) | 2011-03-15 → 2011-03-02 A (-13d) |  | 25% → 100% | 24d → none |  |  |
| 40 | BBQRMS-48 Cashiering - Print Receipt |  | 2011-03-14 A |  | 94% → 100% | 25d → none |  |  |
| 41 | BBQRMS-53 Cashiering - Process Credit Card |  | 2011-03-14 A |  | 38% → 100% | 25d → none |  |  |
| 45 | **Iteration 6 (3/15-4/4)** |  |  |  | 13% → 54% |  |  |  |
| 46 | BBQRMS-37 Order Entry - Recall and modify saved customer order |  | 2011-03-17 A |  | 75% → 100% | 22d → none |  |  |
| 47 | BBQRMS-2 Reports - Daily Shopping List | 2011-03-04 A → 2011-03-21 A (+17d) | 2011-03-08 → 2011-03-23 (+15d) |  |  | 29d → 18d | 15 → 15, 42 |  |
| 48 | Beta testing | 2011-03-15 → 2011-03-14 A (-1d) | 2011-03-23 → 2011-03-18 A (-5d) | 7d → 5d | 0% → 100% | 0d → none |  | constraint as late as possible → start no earlier than 2011-03-14; resources Jerod; Scott; Mike; Jessie → Jessie |
| 49 | Beta Test Results |  |  |  |  |  | 48 → none |  |
| 50 | Graded Checkpoint 3 | 2011-03-14 → 2011-03-21 (+7d) | 2011-03-14 → 2011-03-21 (+7d) |  |  | 26d → 21d |  | constraint start no earlier than 2011-03-14 → start no earlier than 2011-03-21 |
| 51 | Bug Fixing | 2011-03-14 A |  |  | 0% → 75% |  |  |  |
| 52 | System Testing |  | 2011-03-29 → 2011-04-01 (+3d) | 7d → 10d |  | 14d → 11d |  |  |
| 54 | **Iteration 7 (4/5-4/18)** | 2011-04-05 → 2011-04-04 (-1d) |  | 10d → 11d |  |  |  | constraint start no earlier than 2011-04-05 → none |
| 55 | Burn in | 2011-04-05 → 2011-04-04 (-1d) | 2011-04-18 → 2011-04-15 (-3d) |  |  | 0d → 1d |  | constraint none → start no earlier than 2011-04-04 |

## Version 9 (saved 2011-04-05)

Note of the change: Graded Checkpoint 4 Project Plan.

Last finish stays 2011-04-18. Complete tasks 40 → 47.

Changed:

| ID | Task | Start | Finish | Complete | Total float |
| --- | --- | --- | --- | --- | --- |
| 37 | **Iteration 5 (3/1-3/14)** |  | 2011-03-22 A | 97% → 100% | 17.5d → none |
| 42 | BBQRMS-16 Inventory Management - Touch-screen |  | 2011-03-11 A | 75% → 100% | 24.5d → none |
| 45 | **Iteration 6 (3/15-4/4)** |  | 2011-04-04 A | 54% → 100% | 10d → none |
| 47 | BBQRMS-2 Reports - Daily Shopping List |  | 2011-03-23 A | 50% → 100% | 18d → none |
| 49 | Beta Test Results | 2011-03-23 A | 2011-03-23 A | 0% → 100% | 0d → none |
| 50 | Graded Checkpoint 3 | 2011-03-21 A | 2011-03-21 A | 0% → 100% | 21d → none |
| 51 | Bug Fixing |  | 2011-03-22 A | 75% → 100% | 19d → none |
| 52 | System Testing | 2011-03-21 A | 2011-04-01 A | 0% → 100% | 11d → none |
| 53 | Graded Checkpoint 4 | 2011-04-04 A | 2011-04-04 A | 0% → 100% | 0d → none |
